# Stargazer

Schedule from MS Project, 2010-01-06 to 2010-04-07, 4 hours a day, A marks actual dates.
Okanagan College

## Calendars

- Standard: Mon 14:00-16:30; Tue off; Wed 14:30-16:30; Thu 14:30-18:30; Fri-Sun off. Exceptions (off unless hours are given): 2010-04-06 08:00-12:00, 13:00-17:00.

## Resources

| Resource |
| --- |
| Robert |
| Rob |

## Schedule

| ID | WBS | Task | Type | Duration | Start | Finish | Predecessors | Complete | Remaining | Total slack | Free slack | Constraint | Resources | Work | Actual work | Text1 |
| --- | --- | --- | --- | --- | --- | --- | --- | --- | --- | --- | --- | --- | --- | --- | --- | --- |
| 1 | 1 | **Iteration 5: Release #3** |  | 4.25d | 2010-01-06 14:30 A | 2010-01-20 08:00 |  | 8% | 3.92d | 15.12d | 0d |  |  | 24.5h | 1.75h | 16 |
| 2 | 1.1 | **Web system** |  | 3.38d | 2010-01-07 14:30 A | 2010-01-18 15:00 |  | 11% | 2.99d | 15.5d | 0.38d |  |  | 15.25h | 1.75h | 16 |
| 3 | 1.1.1 | Add new online help documentation to website |  | 3h | 2010-01-11 14:00 | 2010-01-13 15:00 |  |  |  | 17.12d |  | start no earlier than 2010-01-11 08:00 | Robert | 3h |  | 12 |
| 4 | 1.1.2 | Fix CSS with mobile devices |  | 15min | 2010-01-07 14:30 A | 2010-01-07 14:45 A |  | 100% |  |  |  | start no earlier than 2010-01-07 08:00 | Rob | 0.25h | 0.25h |  |
| 5 | 1.1.3 | Minor refactoring |  | 1.5h | 2010-01-07 14:30 A | 2010-01-07 16:00 A |  | 100% |  |  |  | start no earlier than 2010-01-07 08:00 | Rob | 1.5h | 1.5h |  |
| 6 | 1.1.4 | Integrate libraries (which have celestial objects of interest) to web site |  | 5h | 2010-01-14 14:30 | 2010-01-18 15:00 | 5 |  |  | 15.5d |  | start no earlier than 2010-01-14 08:00 | Robert | 5h |  | 20 |
| 7 | 1.1.5 | Research Rails plugin to handle scheduling |  | 2h | 2010-01-11 14:00 | 2010-01-11 16:00 |  |  |  | 16.5d | 0d | start no earlier than 2010-01-11 08:00 | Rob | 2h |  |  |
| 8 | 1.1.6 | Implementation to handle scheduling of scripts |  | 2.5h | 2010-01-11 16:00 | 2010-01-13 16:30 | 7 |  |  | 16.5d | 0d |  | Rob | 2.5h |  | 10 |
| 9 | 1.1.7 | Create script which includes connection to telescope server |  | 1h | 2010-01-14 14:30 | 2010-01-14 15:30 | 8 |  |  | 16.5d |  | start no earlier than 2010-01-11 08:00 | Rob | 1h |  |  |
| 10 | 1.2 | **Telescope-controlling application** |  | 0.31d | 2010-01-13 14:30 | 2010-01-13 15:45 |  |  |  | 4.94d | 1.81d |  |  | 1.25h |  | 16 |
| 11 | 1.2.1 | Allow for parking the telescope |  | 15min | 2010-01-13 14:30 | 2010-01-13 14:45 |  |  |  | 16.94d | 0d | start no earlier than 2010-01-13 08:00 | Robert | 0.25h |  |  |
| 12 | 1.2.2 | Allow for telescope movement ability from entered celestial coordinates |  | 1h | 2010-01-13 14:45 | 2010-01-13 15:45 | 11 |  |  | 16.94d |  | start no earlier than 2010-01-13 08:00 | Robert | 1h |  |  |
| 13 | 1.3 | **Documentation** |  | 3.38d | 2010-01-06 14:30 | 2010-01-14 17:30 |  |  |  | 4d | 0.88d |  |  | 8h |  | 16 |
| 14 | 1.3.1 | Documentation updates |  | 2h | 2010-01-06 14:30 | 2010-01-06 16:30 |  |  |  | 18.12d | 2.12d |  | Rob; Robert | 4h |  |  |
| 15 | 1.3.2 | Draft acceptance test |  | 1h | 2010-01-14 14:30 | 2010-01-14 15:30 |  |  |  | 16.5d |  | start no earlier than 2010-01-14 08:00 | Rob | 1h |  |  |
| 16 | 1.3.3 | Create class diagram for telescope-controlling application |  | 1h | 2010-01-14 14:30 | 2010-01-14 15:30 | 14 |  |  | 16d | 0d | start no earlier than 2010-01-14 08:00 | Robert | 1h |  |  |
| 17 | 1.3.4 | Create sequence diagrams for telescope-controlling application |  | 2h | 2010-01-14 15:30 | 2010-01-14 17:30 | 16 |  |  | 16d |  | start no earlier than 2010-01-14 08:00 | Robert | 2h |  |  |
| 18 | 1.4 | Release #3 | milestone | 0d | 2010-01-20 08:00 | 2010-01-20 08:00 | 2, 10, 13 |  |  | 15.12d |  | start no earlier than 2010-01-20 08:00 | Rob; Robert |  |  |  |
| 19 | 2 | **Iteration 6: Release #4** |  | 6.38d | 2010-01-20 14:30 | 2010-02-10 08:00 | 1 |  |  | 12.75d | 0d |  |  | 46.5h |  | 16 |
| 20 | 2.1 | **Web system** |  | 0.88d | 2010-01-20 14:30 | 2010-01-21 16:00 |  |  |  | 18.25d | 5.5d |  |  | 10h |  | 16 |
| 21 | 2.1.1 | Implement mail server/mailing system |  | 3.5h | 2010-01-20 14:30 | 2010-01-21 16:00 |  |  |  | 18.25d |  |  | Rob | 3.5h |  | 14 |
| 22 | 2.1.2 | Add pagination to tables (e.g. schedule log table) |  | 2.5h | 2010-01-20 14:30 | 2010-01-21 15:00 |  |  |  | 18.5d |  |  | Rob | 2.5h |  | 10 |
| 23 | 2.1.3 | Changes to schedule log filtering for mobile device views |  | 1h | 2010-01-20 14:30 | 2010-01-20 15:30 |  |  |  | 18.88d |  |  | Rob | 1h |  |  |
| 24 | 2.1.4 | Fix functional tests |  | 3h | 2010-01-20 14:30 | 2010-01-21 15:30 |  |  |  | 18.38d |  | start no earlier than 2010-01-07 08:00 | Rob | 3h |  | 12 |

| ID | WBS | Task | Type | Duration | Start | Finish | Predecessors | Total slack | Free slack | Constraint | Resources | Work | Text1 |
| --- | --- | --- | --- | --- | --- | --- | --- | --- | --- | --- | --- | --- | --- |
| 25 | 2.2 | **Telescope-controlling application** |  | 1.12d | 2010-01-20 14:30 | 2010-01-21 17:00 |  | 18d | 5.25d |  |  | 4.5h | 16 |
| 26 | 2.2.1 | Integrate camera to telescope-controlling application |  | 4.5h | 2010-01-20 14:30 | 2010-01-21 17:00 |  | 18d | 14.88d |  | Robert | 4.5h | 18 |
| 27 | 2.3 | **Documentation** |  | 4d | 2010-01-20 14:30 | 2010-02-01 15:30 |  | 15.12d | 2.38d |  |  | 32h | 16 |
| 28 | 2.3.1 | Update documentation |  | 16h | 2010-01-20 14:30 | 2010-02-01 15:30 |  | 15.12d |  |  | Rob; Robert | 32h | 64 |
| 29 | 2.4 | Release #4 | milestone | 0d | 2010-02-10 08:00 | 2010-02-10 08:00 | 20, 25, 27 | 12.75d |  | start no earlier than 2010-02-10 08:00 | Rob; Robert |  |  |
| 30 | 3 | **Iteration 7: Release #5** |  | 2.38d | 2010-02-10 14:30 | 2010-02-17 15:30 | 19 | 12.75d | 0d |  |  | 34h | 16 |
| 31 | 3.1 | **Web system** |  | 0.88d | 2010-02-15 14:00 | 2010-02-17 15:30 |  | 12.75d | 0d |  |  | 3.5h | 16 |
| 32 | 3.1.1 | Implement manual telescope positioning |  | 3.5h | 2010-02-15 14:00 | 2010-02-17 15:30 | 36 | 12.75d |  |  | Rob | 3.5h | 14 |
| 33 | 3.2 | **Telescope-controlling application** |  | 2.25d | 2010-02-10 14:30 | 2010-02-17 15:00 |  | 12.75d | 0.12d |  |  | 22.5h | 16 |
| 34 | 3.2.1 | Research image recognition options |  | 3h | 2010-02-10 14:30 | 2010-02-11 15:30 |  | 12.88d | 0d |  | Rob; Robert | 6h | 12 |
| 35 | 3.2.2 | Implement functionality for compiling composite images |  | 4.5h | 2010-02-10 14:30 | 2010-02-11 17:00 | 26 | 14d |  |  | Robert | 4.5h | 18 |
| 36 | 3.2.3 | Implement ability for streaming images live to the web system |  | 6h | 2010-02-10 14:30 | 2010-02-11 18:30 | 26 | 12.75d | 0d |  | Rob | 6h | 24 |
| 37 | 3.2.4 | Implement functionality for image recognition |  | 6h | 2010-02-11 15:30 | 2010-02-17 15:00 | 34 | 12.88d |  |  | Robert | 6h | 24 |
| 38 | 3.3 | **Documentation** |  | 1d | 2010-02-10 14:30 | 2010-02-11 16:30 |  | 14.12d | 1.38d |  |  | 8h | 16 |
| 39 | 3.3.1 | Update documentation |  | 4h | 2010-02-10 14:30 | 2010-02-11 16:30 |  | 14.12d |  |  | Rob; Robert | 8h | 16 |
| 40 | 3.4 | Release #5 | milestone | 0d | 2010-02-17 15:30 | 2010-02-17 15:30 | 31, 33, 38 | 12.75d |  |  | Rob; Robert |  |  |
| 41 | 4 | **Iteration 8: Release #6** |  | 16.62d | 2010-02-17 15:30 | 2010-04-07 08:00 | 30 | 0d |  |  |  | 31.75h | 16 |
| 42 | 4.1 | Final refactoring |  | 5h | 2010-02-17 15:30 | 2010-02-18 18:30 |  | 12.75d | 0d |  | Rob; Robert | 10h | 20 |
| 43 | 4.2 | **Deployment** |  | 0.25d | 2010-02-22 14:00 | 2010-02-22 15:00 | 42 | 12.75d | 0d |  |  | 1.75h | 16 |
| 44 | 4.2.1 | Deploy systems to production environment |  | 1h | 2010-02-22 14:00 | 2010-02-22 15:00 |  | 12.75d |  |  | Rob | 1h |  |
| 45 | 4.2.2 | Migrate database to PostgreSQL |  | 45min | 2010-02-22 14:00 | 2010-02-22 14:45 |  | 12.81d |  |  | Rob | 0.75h |  |
| 46 | 4.3 | **Documentation** |  | 1.75d | 2010-02-22 15:00 | 2010-02-25 18:00 | 43 | 12.75d | 0d |  |  | 13h | 16 |
| 47 | 4.3.1 | Finalize documentation |  | 6h | 2010-02-22 15:00 | 2010-02-25 17:00 |  | 12.75d | 0d |  | Rob; Robert | 12h | 24 |
| 48 | 4.3.2 | Compile final metrics and project statistics |  | 1h | 2010-02-25 17:00 | 2010-02-25 18:00 | 47 | 12.75d |  |  | Robert | 1h |  |
| 49 | 4.4 | Final user acceptance test |  | 1h | 2010-02-17 15:30 | 2010-02-17 16:30 |  | 16.38d |  |  | Rob; Robert | 2h |  |

| ID | WBS | Task | Type | Duration | Start | Finish | Predecessors | Total slack | Constraint | Resources | Work | Text1 |
| --- | --- | --- | --- | --- | --- | --- | --- | --- | --- | --- | --- | --- |
| 50 | 4.5 | **Final Presentation** |  | 13.38d | 2010-02-25 18:00 | 2010-04-07 08:00 | 46 | 0d |  |  | 5h | 16 |
| 51 | 4.5.1 | Create PowerPoint for final presentation |  | 2.5h | 2010-02-25 18:00 | 2010-03-01 16:00 |  | 12.75d |  | Rob; Robert | 5h | 10 |
| 52 | 4.5.2 | Present project to OC faculty and audience | milestone | 0d | 2010-04-07 08:00 | 2010-04-07 08:00 | 51 | 0d | start no earlier than 2010-04-07 08:00 | Rob; Robert |  |  |
| 53 | 4.6 | Final release | milestone | 0d | 2010-04-07 08:00 | 2010-04-07 08:00 | 50, 43, 46 | 0d | start no earlier than 2010-04-07 08:00 | Rob; Robert |  |  |
